# NearFood_Plan_v1.0

How a schedule from MS Project changed from version to version. A marks actual dates.

## Version 1 (saved 2012-10-19)

Note of the change: Thêm file NearFood_Plan_v1.0.mpp

| ID | WBS | Task | Duration | Start | Finish | Predecessors | Complete | Total float |
| --- | --- | --- | --- | --- | --- | --- | --- | --- |
| 1 | 1 | **NearFood** | 10d | 2012-10-19 A | 2012-11-01 |  | 6% | 0d |
| 2 | 1.1 | **Prototype** | 9d | 2012-10-19 A | 2012-10-31 |  | 6% | 0d |
| 3 |  | Framework | 1d | 2012-10-19 A | 2012-10-19 A |  | 100% |  |
| 4 |  | Common Styles | 1d | 2012-10-22 | 2012-10-22 | 3 |  |  |
| 5 | 1.1.3 | **User** | 7d | 2012-10-23 | 2012-10-31 |  |  | 0d |
| 6 |  | Welcome | 1d | 2012-10-23 | 2012-10-23 | 4 |  |  |
| 7 |  | Register | 1d | 2012-10-24 | 2012-10-24 | 6 |  |  |
| 8 |  | Login | 1d | 2012-10-25 | 2012-10-25 | 7 |  |  |
| 9 |  | Forgot Password | 1d | 2012-10-26 | 2012-10-26 | 8 |  |  |
| 10 |  | Profile | 2d | 2012-10-29 | 2012-10-30 | 9 |  |  |
| 11 |  | Change Password | 1d | 2012-10-31 | 2012-10-31 | 10 |  |  |
| 12 |  | Search | 1d | 2012-10-23 | 2012-10-23 | 4 |  |  |
| 13 |  | Check In | 1d | 2012-10-23 | 2012-10-23 | 4 |  |  |
| 14 |  | Favorites | 1d | 2012-10-30 | 2012-10-30 | 19 |  |  |
| 15 | 1.1.7 | **Settings** | 1d | 2012-10-19 | 2012-10-19 |  |  |  |
| 16 |  | Settings | 2d | 2012-10-23 | 2012-10-24 | 4 |  |  |
| 17 |  | Feedback | 1d | 2012-10-25 | 2012-10-25 | 16 |  |  |
| 18 |  | Help | 1d | 2012-10-26 | 2012-10-26 | 17 |  |  |
| 19 |  | About | 1d | 2012-10-29 | 2012-10-29 | 18 |  |  |
| 20 |  | Test and fix bugs | 1d | 2012-11-01 | 2012-11-01 | 2 |  |  |

## Version 2 (saved 2012-10-19)

Note of the change: Plan

Last finish stays 2012-11-01.

Changed:

| ID | Task | Start | Finish | Duration | Complete | Predecessors |
| --- | --- | --- | --- | --- | --- | --- |
| 1 | **NearFood** |  |  |  | 6% → 4% |  |
| 2 | **Prototype** |  | 2012-10-31 → 2012-10-26 (-5d) | 9d → 6d | 6% → 4% |  |
| 5 | **User** |  | 2012-10-31 → 2012-10-25 (-6d) | 7d → 3d |  |  |
| 6 | Welcome |  |  |  |  | 4 → none |
| 7 | Register | 2012-10-24 → 2012-10-23 (-1d) |  |  |  | 6 → none |
| 8 | Login | 2012-10-25 → 2012-10-24 (-1d) | 2012-10-25 → 2012-10-24 (-1d) |  |  | 7 → none |
| 9 | Forgot Password | 2012-10-26 → 2012-10-24 (-2d) | 2012-10-26 → 2012-10-24 (-2d) |  |  | 8 → none |
| 10 | Profile | 2012-10-29 → 2012-10-25 (-4d) | 2012-10-30 → 2012-10-25 (-5d) | 2d → 1d |  | 9 → none |
| 11 | Change Password | 2012-10-31 → 2012-10-25 (-6d) | 2012-10-31 → 2012-10-25 (-6d) |  |  |  |
| 12 | Search |  | 2012-10-23 → 2012-10-26 (+3d) | 1d → 4d |  |  |
| 13 | Check In |  | 2012-10-23 → 2012-10-25 (+2d) | 1d → 3d |  |  |
| 14 | Favorites | 2012-10-30 → 2012-10-25 (-5d) | 2012-10-30 → 2012-10-25 (-5d) |  |  | 19 → 15 |
| 16 | Settings |  |  |  |  | 4 → none |
| 17 | Feedback | 2012-10-25 → 2012-10-23 (-2d) | 2012-10-25 → 2012-10-24 (-1d) | 1d → 2d |  | 16 → none |
| 18 | Help | 2012-10-26 → 2012-10-23 (-3d) | 2012-10-26 → 2012-10-24 (-2d) | 1d → 2d |  | 17 → none |
| 19 | About | 2012-10-29 → 2012-10-23 (-6d) | 2012-10-29 → 2012-10-24 (-5d) | 1d → 2d |  | 18 → none |
